# Planung eBilanz-Kit

Schedule from MS Project, 2012-09-11 to 2012-10-12, status date 2012-09-11, A marks actual dates.

## Calendars

- Standard: Mon-Fri 08:00-12:00, 13:00-17:00; Sat-Sun off.

## Resources

| Resource |
| --- |
| Dibbert |
| Strutzberg |
| Sebastian Vetter |
| Márton Garai |
| Gabor Bauer |
| Erno Taba |
| Benjamin Held |
| Marcus Gerlach |
| isb |
| sem |
| sev, mag |

## Schedule

| ID | WBS | Task | Duration | Start | Finish | Total slack | Constraint | Deadline | Resources | Work | Text23 |
| --- | --- | --- | --- | --- | --- | --- | --- | --- | --- | --- | --- |
| 1 | 1 | **V1.7** | 23.88d? | 2012-09-11 | 2012-10-12 | 0d |  |  |  | 945h |  |
| 2 | 1.1 | Technische Möglichkeit schaffen die Version einer Taxonomie auszuwählen | 10.88d? | 2012-09-28 | 2012-10-12 | 0d | start no earlier than 2012-09-28 | 2012-10-12 | Márton Garai | 87h |  |
| 3 | 1.2 | XBRL Fußnoten / Editor für Freitextfelder | 6.67d | 2012-09-11 | 2012-09-19 | 17.21d |  |  | Sebastian Vetter [75%] | 40h |  |
| 4 | 1.3 | Bericht sperren wenn gesendet | 15d? | 2012-09-11 | 2012-10-02 | 8.88d |  |  | sem | 120h |  |
| 5 | 1.4 | **Validierung** | 1d? | 2012-09-11 | 2012-09-12 | 22.88d |  |  |  | 48h |  |
| 6 | 1.4.1 | Fehlerreport / Navigation durch alle Fehler | 1d? | 2012-09-11 | 2012-09-12 | 22.88d |  |  |  | 40h |  |
| 7 | 1.4.2 | Sind Werte nur für ausgewähltes GuV Format hinterlegt | 1d? | 2012-09-11 | 2012-09-12 | 22.88d |  |  |  |  |  |
| 8 | 1.4.3 | Anpassung an neuen technischen Leitfaden | 1d? | 2012-09-11 | 2012-09-12 | 22.88d |  |  | Márton Garai | 8h |  |
| 9 | 1.5 | **Sonstiges** | 5d? | 2012-09-11 | 2012-09-18 | 18.88d |  |  |  | 40h |  |
| 10 | 1.5.1 | Kontenzuordnung zu Tupel (Report --> Anhang --> Anlagespiegel --> "Angaben zu immateriellen Vermögensgegeständen / Position im Anlagenspiegel")? | 1d? | 2012-09-11 | 2012-09-12 | 14d |  |  |  |  | Acando GmbH, Daniel Winkler |
| 11 | 1.5.2 | Vorlagen für Identifikationsmerkmale des Berichts | 5d | 2012-09-11 | 2012-09-18 | 18.88d |  |  | isb | 40h |  |
| 12 | 1.6 | **Minis** | 10d? | 2012-09-11 | 2012-09-25 | 13.88d |  |  |  | 602h |  |
| 13 | 1.6.1 | **Bundesanzeiger** | 10d? | 2012-09-11 | 2012-09-25 | 13.88d |  |  | sev, mag | 602h |  |
| 14 | 1.6.1.1 | Verlinkung Formular / Info für Registrierung bei Bundesanzeiger | 0.12d | 2012-09-11 | 2012-09-11 | 23.75d |  |  |  |  |  |
| 15 | 1.6.1.2 | **Clientverwaltung** | 3d | 2012-09-11 | 2012-09-14 | 20.88d |  |  |  | 78h |  |
| 16 | 1.6.1.2.1 | Neuen Client anlegen | 4h | 2012-09-11 | 2012-09-11 | 23.38d |  |  |  | 4h |  |
| 17 | 1.6.1.2.2 | Client löschen | 2h | 2012-09-11 | 2012-09-11 | 23.62d |  |  |  | 2h |  |
| 18 | 1.6.1.2.3 | Client ändern | 4h | 2012-09-11 | 2012-09-11 | 23.38d |  |  |  | 4h |  |
| 19 | 1.6.1.2.4 | Clients anzeigen / exist. Client zuordnen | 4h | 2012-09-11 | 2012-09-11 | 23.38d |  |  |  | 4h |  |
| 20 | 1.6.1.2.5 | Datenabgleich bei Änderungen über Webinterface, opt. Datenabgleich | 16h | 2012-09-11 | 2012-09-13 | 21.88d |  |  |  | 16h |  |
| 21 | 1.6.1.2.6 | Datenablgeich Client -> Unternehmen | 8h | 2012-09-11 | 2012-09-12 | 22.88d |  |  |  | 8h |  |
| 22 | 1.6.1.2.7 | GUI | 16h | 2012-09-11 | 2012-09-13 | 21.88d |  |  |  | 16h |  |
| 23 | 1.6.1.2.8 | Sonstiges | 24h | 2012-09-11 | 2012-09-14 | 20.88d |  |  |  | 24h |  |
| 24 | 1.6.1.3 | **Auftragsverwaltung** | 10d | 2012-09-11 | 2012-09-25 | 13.88d |  |  |  | 216h |  |
| 25 | 1.6.1.3.1 | Recherche/Einarbeitung MTOM-Format / Binärdaten | 8h | 2012-09-11 | 2012-09-12 | 22.88d |  |  |  | 8h |  |
| 26 | 1.6.1.3.2 | XBRL Generierung | 40h | 2012-09-11 | 2012-09-18 | 18.88d |  |  |  | 40h |  |
| 27 | 1.6.1.3.3 | Validierung | 16h | 2012-09-11 | 2012-09-13 | 21.88d |  |  |  | 16h |  |
| 28 | 1.6.1.3.4 | Senden (inkl. GUI) | 32h | 2012-09-11 | 2012-09-17 | 19.88d |  |  |  | 32h |  |
| 29 | 1.6.1.3.5 | Anlegen, Löschen, etc. von Aufträgen (inkl. GUI) | 40h | 2012-09-11 | 2012-09-18 | 18.88d |  |  |  | 40h |  |
| 30 | 1.6.1.3.6 | Datenabgleich Report -> Bundesanzeiger-Auftrag | 80h | 2012-09-11 | 2012-09-25 | 13.88d |  |  |  | 80h |  |

Notes:
- 2: Text1: posibiliy to change the taxonomy version
- 3: Erläuterungen zu einer oder mehreren XBRL-Positionen / Text1: xbrl footnotes / editor for text fields eg. in Notes section
- 4: Text1: lock report after sending (company data has to be locked as well so that it will not change if there are changes in the company data the following year)
- 5: Text1: validation
- 6: Text1: error report / navigation through all errors
- 7: Text1: only values for selected income statement format given?
- 8: Text1: implement checks regarding the new technical guidline
- 9: Text1: others
- 10: Text1: assign accounts to tupel
- 11: Übernahme aus anderem Report / Text1: templates for general report informations
- 13: Text1: Federal Gazette
- 14: Text1: Link to the registration form of the website
- 15: Text1: ClientManagement
- 16: Text1: create a new client
- 17: Text1: delete client
- 18: Text1: change client
- 19: Text1: show clients / assign existing clients
- 20: Text1: crosscheck of data changed by web interface
- 21: Text1: crosscheck of client / company data
- 22: Text1: GUI
- 23: Text1: others
- 24: Text1: request management
- 25: ggf. Nutzung MS Web Services Enhancements 3.0? / Text1: research / getting familiar with format MTOM and binary data
- 26: ·Prüfung, ob auch Gesamt-XBRL angegeben werden kann (Dateityp 1?) / ·Prüfung, welche Berichtsbestandteile notwendig bzw. nicht erlaubt sind (abhängig von Unternehmensgröße?) / Text1: generate XBRL
- 27: Text1: validation
- 28: Text1: sending (incl. GUI)
- 29: Text1: create, delete … of requests
- 30: Text1: crosscheck data report -> request

| ID | WBS | Task | Duration | Start | Finish | Complete | Total slack | Resources | Work | Actual work | Text3 |
| --- | --- | --- | --- | --- | --- | --- | --- | --- | --- | --- | --- |
| 31 | 1.6.1.4 | **Sonstiges** | 10d? | 2012-09-11 | 2012-09-25 |  | 13.88d |  | 228h |  |  |
| 32 | 1.6.1.4.1 | Einbindung AppConfig | 4h | 2012-09-11 | 2012-09-11 |  | 23.38d |  | 4h |  |  |
| 33 | 1.6.1.4.2 | Anbindung Berechtigungssystem | 24h | 2012-09-11 | 2012-09-14 |  | 20.88d |  | 24h |  |  |
| 34 | 1.6.1.4.3 | Logging | 40h | 2012-09-11 | 2012-09-18 |  | 18.88d |  | 40h |  |  |
| 35 | 1.6.1.4.4 | Test und Debugging | 80h | 2012-09-11 | 2012-09-25 |  | 13.88d |  | 80h |  |  |
| 36 | 1.6.1.4.5 | Import von Textfeldern aus RTF-Dokumenten | 1d? | 2012-09-11 | 2012-09-12 |  | 22.88d |  | 80h |  | bei Bundesanzeiger |
| 37 | 1.7 | **Setup** | 1d? | 2012-09-11 | 2012-09-12 |  | 22.88d |  |  |  |  |
| 38 | 1.7.1 | Installationsumfang auswählbar machen (C++ Redis ja/nein; .NET-Framework ja/nein) | 1d? | 2012-09-11 | 2012-09-12 |  | 22.88d |  |  |  |  |
| 39 | 1.8 | **Handbuch** | 1d? | 2012-09-11 | 2012-09-12 |  | 22.88d |  | 8h |  |  |
| 40 | 1.8.1 | Änderungen bzgl. neuem Setup einpflegen | 1d? | 2012-09-11 | 2012-09-12 |  | 22.88d |  |  |  |  |
| 41 | 1.8.2 | Backup-Service beschreiben | 1d? | 2012-09-11 | 2012-09-12 |  | 22.88d |  |  |  |  |
| 42 | 1.8.3 | Übersetzung Handbuch | 1d? | 2012-09-11 | 2012-09-12 |  | 22.88d |  |  |  |  |
| 43 | 1.8.4 | Vorlagen Bearbeiten etwas knapp gehalten (Anm. von vis) | 1d? | 2012-09-11 | 2012-09-12 |  | 22.88d |  |  |  |  |
| 44 | 1.8.5 | Stichwortverzeichnis für Handbuch | 1d? | 2012-09-11 | 2012-09-12 |  | 22.88d |  | 8h |  |  |
| 45 | 2 | **done** | 1d? | 2012-09-11 A | 2012-09-12 A | 100% |  |  | 104h | 104h |  |
| 46 | 2.1 | **Import** | 1d? | 2012-09-11 A | 2012-09-12 A | 100% |  |  | 104h | 104h |  |
| 47 | 2.1.1 | Import von XBRL Instanzdokumenten | 1d? | 2012-09-11 A | 2012-09-12 A | 100% |  | isb [1300%] | 104h | 104h |  |
| 48 | 3 | Vorlagen (Kontogruppen, Kontoaufteilungen) aus letztem Jahr übernehmen | 2d? | 2012-09-11 A | 2012-09-13 A | 100% |  |  | 40h | 40h |  |
| 49 | 4 | Kontensicht mit Gridsplitter | 1d? | 2012-09-12 A | 2012-09-13 A | 100% |  | sem | 8h | 8h |  |
| 50 | 5 | Vorlagen kopieren | 1d? | 2012-09-11 A | 2012-09-12 A | 100% |  | sem | 8h | 8h |  |
| 51 | 6 | Kontoaufteilung: Letztes Konto selbstständig befüllen (oder Restbetrag anzeigen) | 1d? | 2012-09-13 A | 2012-09-14 A | 100% |  | sem | 8h | 8h |  |
| 52 | 7 | **Synchronisation von Datenbeständen** | 1d? | 2012-09-11 A | 2012-09-12 A | 100% |  | isb | 24h | 24h |  |
| 53 | 7.1 | Export von gewissen Reports (um auf temporärer Datenbank weiter zu arbeiten und später wieder einzuspielen) | 1d? | 2012-09-11 A | 2012-09-12 A | 100% |  | isb | 8h | 8h |  |
| 54 | 7.2 | Spätere Synchronisation der Reports | 1d? | 2012-09-11 A | 2012-09-12 A | 100% |  | isb | 8h | 8h |  |
| 55 | 8 | Export der Taxonomie genauso wie Excelvisualisierung von esteuer.de | 1d? | 2012-09-11 A | 2012-09-12 A | 100% |  | Márton Garai | 8h | 8h |  |
| 56 | 9 | Active Directory ist zu langsam, vorher filtern | 1d? | 2012-09-12 A | 2012-09-13 A | 100% |  | sem | 8h | 8h |  |
| 57 | 10 | Sortierung der Konten in Vorlage, weder numerisch noch alphanumerisch | 1d? | 2012-09-11 A | 2012-09-12 A | 100% |  | Erno Taba | 8h | 8h |  |
| 58 | 11 | Validierungsmeldung: Davon Position darf nicht größer sein als Obersumme | 1d? | 2012-09-11 A | 2012-09-12 A | 100% |  | sem | 8h | 8h |  |

Notes:
- 31: Text1: others
- 32: Text1: including of AppConfig
- 33: Text1: including right management
- 34: Text1: logging
- 35: Text1: test and debug
- 36: Text1: import text infos from RTF documents
- 38: Text1: allow user to select if C++ redistributables or .NET framework should be installed as well
- 42: angefragt von Rockwood, erst wenn der Großteil der Änderungen umgestzt ist
- 46: Text1: import
- 47: Text1: import XBRL
- 48: Text1: splitting and grouping saved in templates to restore next year
- 49: Text1: grid spliter at the balance list part
- 50: Text1: copy mapping templates
- 51: Text1: auto fill last remaining account at account splitting process (or show money left)
- 52: Text1: syncronisation / Text23: RoeverBroennerSusat
- 53: Text1: export selected report (like XBRL but incl. EBK infos like splitted accounts ...)
- 54: Text1: reimport / syncronise report data
- 55: Text1: export of taxonomy visualisation (excel) like given by the financial authority (esteuer.de) / Text23: E+S Software (Auftrag erteilt, Umsetzung bis spätestens Ende Oktober)
- 56: Text1: allow filtering the AD users before requesting all users from AD
- 57: Text1: sorting of accounts in mapping templates
- 58: Text1: validation: "davon" position has to be less or equal parent position
