# Planung eBilanz-Kit

Schedule from MS Project, 2011-12-11 to 2012-05-22, status date 2012-04-10, A marks actual dates.

## Calendars

- Standard: Mon-Fri 08:00-12:00, 13:00-17:00; Sat-Sun off. Exceptions (off unless hours are given): 2012-05-01 (Tag der Arbeit), 2012-05-17 (Christi Himmelfahrt).

## Resources

| Resource |
| --- |
| Dibbert |
| Strutzberg |
| Sebastian Vetter |
| Márton Garai |
| Gabor Bauer |
| Arpad Bodza |
| Benjamin Held |
| Marcus Gerlach |

## Schedule

| ID | WBS | Task | Duration | Start | Finish | Complete | Remaining | Total slack | Constraint | Resources | Work | Actual work |
| --- | --- | --- | --- | --- | --- | --- | --- | --- | --- | --- | --- | --- |
| 1 | 1 | **Planung eBilanz-Kit** | 114.12d? | 2011-12-11 A | 2012-05-22 | 50% | 57.31d? | 0d |  |  | 3169.48h | 1221.23h |
| 2 | 1.1 | **V1.6 / Deadline: Mo, 16.04.** | 41d? | 2012-03-19 A | 2012-05-16 | 86% | 5.59d? | 3d | start no earlier than 2012-03-19 |  | 1340.51h | 1216.51h |
| 3 | 1.1.1 | **Bugfixes** | 19d? | 2012-03-19 A | 2012-04-13 | 79% | 4d? | 25d |  |  | 43.61h | 43.61h |
| 4 | 1.1.1.1 | Einloggen mit inaktivem User noch möglich | 0.04d | 2012-04-10 A | 2012-04-10 A | 100% |  |  |  | Sebastian Vetter [80%] | 0.25h | 0.25h |
| 5 | 1.1.1.2 | Bug: Aktive Directory / bei Erstanmeldung alle Nutzer sichtbar?! | 0.82d | 2012-04-10 A | 2012-04-10 A | 100% |  |  |  | Sebastian Vetter [80%] | 5.28h | 5.28h |
| 6 | 1.1.1.3 | Programm wird beim Schließen des Registrierungsdialoges nicht korrekt beendet | 0.01d | 2012-04-10 A | 2012-04-10 A | 100% |  |  | start no earlier than 2012-03-21 | Dibbert [70%] | 0.08h | 0.08h |
| 7 | 1.1.1.4 | Reiter "zugeordnete Konten" / ausgeblendete Konten werden nicht angezeigt | 0.31d | 2012-04-10 A | 2012-04-10 A | 100% |  |  |  | Sebastian Vetter [80%] | 2h | 2h |
| 8 | 1.1.1.5 | Csv Reader hat Probleme wenn die letzte Spaltenüberschrift nicht gesetzt ist | 1d? | 2012-04-12 A | 2012-04-13 A | 100% |  |  | start no earlier than 2012-04-12 | Benjamin Held [50%] | 4h | 4h |
| 9 | 1.1.1.6 | Übersicht über nicht gesendete Kontonachweise wirft Exception | 1d? | 2012-03-19 A | 2012-03-20 A | 100% |  |  |  | Márton Garai | 8h | 8h |
| 10 | 1.1.1.7 | Probleme beim Active Directory, nicht alle User werden angezeigt | 1.25d? | 2012-03-19 A | 2012-03-20 A | 100% |  |  |  | Sebastian Vetter [80%] | 8h | 8h |
| 11 | 1.1.1.8 | Bei Branchentaxonomie sind Elemente im ValueTree die nicht dort sein sollten | 2d? | 2012-03-19 A | 2012-03-21 A | 100% |  |  |  | Dibbert | 16h | 16h |
| 12 | 1.1.1.9 | Terselabel statt Label angezeigt bei Steuerliche Gewinnermittlung | 1d? | 2012-03-19 A | 2012-03-20 A | 100% |  |  |  |  |  |  |
| 13 | 1.1.1.10 | Domänen bei AD überprüfen | 1d? | 2012-03-19 A | 2012-03-20 A | 100% |  |  |  |  |  |  |
| 14 | 1.1.1.11 | Firma beim Report wechseln, Anzeige oben falsch | 1d? | 2012-03-19 A | 2012-03-20 A | 100% |  |  |  |  |  |  |
| 15 | 1.1.1.12 | Regdialog öffnet sich 2x | 1d? | 2012-03-19 A | 2012-03-20 A | 100% |  |  |  |  |  |  |
| 16 | 1.1.1.13 | Nur manuelle Eingaben anzeigen funktioniert nicht mehr | 1d? | 2012-03-19 A | 2012-03-20 A | 100% |  |  |  |  |  |  |
| 17 | 1.1.1.14 | XBRL Export zeigt Controls des Pdf Exports | 1d? | 2012-03-19 A | 2012-03-20 A | 100% |  |  |  |  |  |  |
| 18 | 1.1.1.15 | Konto splitten, Center Owner | 1d? | 2012-03-19 A | 2012-03-20 A | 100% |  |  |  |  |  |  |
| 19 | 1.1.1.16 | Datum auswählen: Kalender auf englisch | 1d? | 2012-03-19 A | 2012-03-20 A | 100% |  |  |  |  |  |  |
| 20 | 1.1.1.17 | TODO (DEBUG) genInfo.company.id.parent (Mutterunternehmen) wird wegen Problemen derzeit noch ignoriert | 1d? | 2012-03-19 A | 2012-03-20 A | 100% |  |  |  |  |  |  |
| 21 | 1.1.1.18 | de-gcd_genInfo.company.id.taxGroupKstEst genInfo.report.audit einpflegen | 1d? | 2012-03-19 | 2012-03-20 |  |  | 43d |  |  |  |  |
| 22 | 1.1.1.19 | Filter in Mapping Templates geht nicht | 1d? | 2012-03-19 A | 2012-03-20 A | 100% |  |  |  |  |  |  |
| 23 | 1.1.1.20 | Vorlage löschen: Abfrage einbauen | 1d? | 2012-03-19 A | 2012-03-20 A | 100% |  |  |  |  |  |  |
| 24 | 1.1.1.21 | Proxy aus der Config wird nicht benutzt | 1d? | 2012-03-19 | 2012-03-20 |  |  | 43d |  |  |  |  |
| 25 | 1.1.1.22 | Öffnen der Dateien nur ReadOnly, auch wenn in Excel geöffnet | 1d? | 2012-03-19 A | 2012-03-20 A | 100% |  |  |  |  |  |  |
| 26 | 1.1.1.23 | Kopieren von Berichten mit Bankentaxonomie, beim auswählen kommt Nachfrage ob Taxonomie geändert werden soll | 1d? | 2012-03-19 A | 2012-03-20 A | 100% |  |  |  |  |  |  |
| 27 | 1.1.1.24 | Bankentaxonomie: GKV auswählen - Crash | 1d? | 2012-03-19 A | 2012-03-20 A | 100% |  |  |  |  |  |  |
| 28 | 1.1.1.25 | Name in Mapping Templates zu lang - Fehlermeldung ausgeben | 1d? | 2012-03-19 A | 2012-03-20 A | 100% |  |  |  |  |  |  |
| 29 | 1.1.1.26 | Mehrfaches Unternehmenwechseln nicht möglich | 1d? | 2012-03-19 A | 2012-03-20 A | 100% |  |  |  |  |  |  |
| 30 | 1.1.1.27 | Leerzeilen ignorieren | 1d? | 2012-03-19 A | 2012-03-20 A | 100% |  |  |  |  |  |  |
| 31 | 1.1.1.28 | Neuen Bericht anlegen, berechnete Saldenliste wurde 2x eingefügt. Konto wird nicht aktualisiert wenn in GuV was gemappt wird (erst nach neustart) | 1d? | 2012-03-19 A | 2012-03-20 A | 100% |  |  |  |  |  |  |
| 32 | 1.1.1.29 | Berechnetes Konto bei Bankentaxonomie, Vorzeichen korrekt? | 1d? | 2012-03-19 | 2012-03-20 |  |  | 43d |  |  |  |  |
| 33 | 1.1.1.30 | Enter beim Susa-Vorlagen speichern Dialog klappt nicht | 1d? | 2012-03-19 A | 2012-03-20 A | 100% |  |  |  |  |  |  |
| 34 | 1.1.1.31 | Davon Positionen prüfen, werden nicht korrekt deaktiviert | 1d? | 2012-03-19 | 2012-03-20 |  |  | 43d |  |  |  |  |
| 35 | 1.1.1.32 | Globale Suche klappt nicht immer die Positionen auf | 1d? | 2012-03-19 A | 2012-03-20 A | 100% |  |  |  |  |  |  |
| 36 | 1.1.1.33 | Berechnet Konto nach neuanlegen des Berichts nicht funktionsfähig | 1d? | 2012-03-19 | 2012-03-20 |  |  | 43d |  |  |  |  |
| 37 | 1.1.1.34 | Transaktionen bei Stammdatenimport ausblenden | 1d? | 2012-03-19 | 2012-03-20 |  |  | 43d |  |  |  |  |
| 38 | 1.1.1.35 | Bei Vorlagen: Keine virtuelle SuSas | 1d? | 2012-03-19 A | 2012-03-20 A | 100% |  |  |  |  |  |  |
| 39 | 1.1.1.36 | Datenbankupgrade: Manuelle Werte * 100 | 1d? | 2012-03-19 A | 2012-03-20 A | 100% |  |  |  |  |  |  |
| 40 | 1.1.1.37 | Update aus 1.4 -> nach Tax Upgrade, gibt es kaputte Elemente in der GUI (Previous Year…) | 1d? | 2012-03-19 A | 2012-03-20 A | 100% |  |  |  |  |  |  |
| 41 | 1.1.1.38 | Nach Dbupdate aus 1.4 muss Branche eingetragen werden | 1d? | 2012-03-19 A | 2012-03-20 A | 100% |  |  |  |  |  |  |
| 42 | 1.1.1.39 | Nach Dbupdate Combobox Items checken (de-gcd_ zuviel?) | 1d? | 2012-03-19 A | 2012-03-20 A | 100% |  |  |  |  |  |  |
| 43 | 1.1.1.40 | Active Directory Crash wenn man nicht als Domänennutzer eingeloggt ist | 1d? | 2012-03-19 A | 2012-03-20 A | 100% |  |  |  |  |  |  |

Notes:
- 6: Dispose ConnectionManger
- 9: Check what is wrong with exporting "gesendete Kontonachweise"

| ID | WBS | Task | Duration | Start | Finish | Complete | Remaining | Baseline start | Baseline finish | Baseline duration | Total slack | Free slack | Constraint | Deadline | Resources | Work | Actual work |
| --- | --- | --- | --- | --- | --- | --- | --- | --- | --- | --- | --- | --- | --- | --- | --- | --- | --- |
| 44 | 2 | **Neuen User anlegen, damit einloggen: Changelog wird angezeigt** | 0d |  |  |  |  | 2012-03-19 | 2012-03-20 | 65536d | 140712d | 140726d |  | 2012-03-19 |  |  |  |
| 45 | 2.1 | **Neues Unternehmen anlegen: Leerer Name möglich** | 1d? | 2012-03-19 | 2012-03-20 |  |  |  |  |  | 43d |  |  |  |  |  |  |
| 46 | 2.1.1 | **SuSa Import mit zwei Tausendertrennzeichen, ohne Dezimaltrenner führt zu Problemen** | 1d? | 2012-03-19 A | 2012-03-20 A | 100% |  |  |  |  |  |  |  |  |  |  |  |
| 47 | 2.1.1.1 | Import der Überleitungsrechnung macht Probleme | 1d? | 2012-03-19 | 2012-03-20 |  |  |  |  |  | 43d |  |  |  |  |  |  |
| 48 | 2.1.1.2 | Doppelte Überleitungswerte nach Upgrade - Testen | 1d? | 2012-03-19 | 2012-03-20 |  |  |  |  |  | 43d |  |  |  |  |  |  |
| 49 | 2.1.1.3 | Keine Susa mit Oracle | 1d? | 2012-03-19 A | 2012-03-20 A | 100% |  |  |  |  |  |  |  |  |  |  |  |
| 50 | 2.1.1.4 | Datepicker Berichtsperiode nicht mit Company koppeln | 1d? | 2012-03-19 A | 2012-03-20 A | 100% |  |  |  |  |  |  |  |  |  |  |  |
| 51 | 2.1.1.5 | Bei neuem Bericht, Berichtsperioden setzen. Validierung hinzufügen. | 1d? | 2012-03-19 A | 2012-03-20 A | 100% |  |  |  |  |  |  |  |  |  |  |  |
| 52 | 2.1.1.6 | Icon Delete Report | 1d? | 2012-03-19 | 2012-03-20 |  |  |  |  |  | 43d |  |  |  |  |  |  |
| 53 | 2.1.2 | **Ausblenden** | 8.11d | 2012-04-10 A | 2012-04-20 A | 100% |  |  |  |  |  |  |  |  |  | 20h | 20h |
| 54 | 2.1.2.1 | Ausblenden von nicht relevanten Feldern in GUV: (abhängig von Auswahl GKV oder UKV) | 1.25d | 2012-04-16 A | 2012-04-20 A | 100% |  |  |  |  |  |  | start no earlier than 2012-04-10 |  | Sebastian Vetter [80%] | 8h | 8h |
| 55 | 2.1.2.2 | Ausblenden aller nicht zur gewählten Branche gehörenden Positionen | 0.62d | 2012-04-16 A | 2012-04-16 A | 100% |  |  |  |  |  |  | start no earlier than 2012-04-10 |  | Sebastian Vetter [80%] | 4h | 4h |
| 56 | 2.1.2.3 | Ausblenden aller nicht zur gewählten Rechtsform gehörenden Positionen / noch nicht für alle Rechtsformen möglich da Zuordnung Rechtsform zu Gesellschaftsform (Personengesellschaft etc.) teilweise noch fehlt | 1.25d | 2012-04-10 A | 2012-04-16 A | 100% |  |  |  |  |  |  |  |  | Sebastian Vetter [80%] | 8h | 8h |
| 57 | 2.1.3 | **Logging** | 31.2d? | 2012-03-19 A | 2012-05-02 A | 100% |  |  |  |  |  |  |  |  |  | 80h | 80h |
| 58 | 2.1.3.1 | Logging der derzeit noch nicht geloggten Änderungen (inkl. Prüfung) | 2.5d | 2012-04-10 A | 2012-04-24 A | 100% |  |  |  |  |  |  | start no earlier than 2012-04-10 |  | Sebastian Vetter [80%] | 16h | 16h |
| 59 | 2.1.3.2 | Logfiles exportieren | 1.2d? | 2012-04-30 A | 2012-05-02 A | 100% |  |  |  |  |  |  | start no earlier than 2012-04-10 |  | Arpad Bodza; Márton Garai | 16h | 16h |
| 60 | 2.1.3.3 | GUI Logviewer | 4d? | 2012-04-24 A | 2012-04-30 A | 100% |  |  |  |  |  |  | start no earlier than 2012-04-10 |  | Márton Garai | 32h | 32h |
| 61 | 2.1.3.4 | Auch durch nicht admin aufrufbar, dann nur eigene Logs | 1d? | 2012-03-19 A | 2012-03-20 A | 100% |  |  |  |  |  |  |  |  |  | 16h | 16h |
| 62 | 2.1.4 | **Sonstiges** | 40d? | 2012-03-19 A | 2012-05-15 | 96% | 1.4d? |  |  |  | 4d |  |  |  |  | 263.99h | 261.99h |
| 63 | 2.1.4.1 | Speichern des Passworts möglich | 1d? | 2012-03-19 A | 2012-03-20 A | 100% |  |  |  |  |  |  |  |  | Sebastian Vetter [80%] | 6.4h | 6.4h |
| 64 | 2.1.4.2 | Verbesserungsvorschläge Button, wo ein Pdf geöffnet wird mit FAX Nummer | 1d? | 2012-03-19 | 2012-03-20 |  |  |  |  |  | 43d |  |  |  |  |  |  |
| 65 | 2.1.4.3 | Neuen ERIC Client einarbeiten | 1d? | 2012-03-19 A | 2012-03-20 A | 100% |  |  |  |  |  |  |  |  |  | 8h | 8h |
| 66 | 2.1.4.4 | Zur zuletzt bearbeiteten Position springen | 2d? | 2012-03-19 A | 2012-03-21 A | 100% |  |  |  |  |  |  |  |  |  | 16h | 16h |
| 67 | 2.1.4.5 | Kopieren von Reports | 0.62d | 2012-04-10 A | 2012-04-19 A | 100% |  |  |  |  |  |  |  |  | Sebastian Vetter [80%] | 4h | 4h |
| 68 | 2.1.4.6 | Performance bei vielen Reports überprüfen | 1.25d? | 2012-03-19 A | 2012-03-20 A | 100% |  |  |  |  |  |  |  |  | Sebastian Vetter [80%] | 8h | 8h |
| 69 | 2.1.4.7 | Icon für Felder mit manuellen Eingaben (farbl. Hervorhebung teilweise schlecht erkennbar, z.B. bei Beamern) | 0.09d | 2012-05-10 A | 2012-05-10 A | 100% |  |  |  |  |  |  | start no earlier than 2012-04-10 |  | Dibbert [70%] | 0.48h | 0.48h |
| 70 | 2.1.4.8 | Logos Port²M in Zusatztools (Admin etc.) | 0.04d | 2012-05-10 A | 2012-05-10 A | 100% |  |  |  |  |  |  | start no earlier than 2012-04-10 |  | Dibbert [70%] | 0.25h | 0.25h |
| 71 | 2.1.4.9 | Anzeige Icon für AD-User in Login | 0.04d | 2012-05-10 A | 2012-05-10 A | 100% |  |  |  |  |  |  | start no earlier than 2012-04-10 |  | Dibbert [70%] | 0.24h | 0.24h |
| 72 | 2.1.4.10 | Filter: gefundenes Feld selektiert lassen wenn Filter geloscht wurden | 0.5d | 2012-04-10 A | 2012-04-10 A | 100% |  |  |  |  |  |  | start no earlier than 2012-04-10 |  | Benjamin Held | 4h | 4h |
| 73 | 2.1.4.11 | optionale Übernahme von Gewinn/Verlust in Ergebnisverwendung und Bilanz | 3.5d | 2012-04-10 A | 2012-04-13 A | 100% |  |  |  |  |  |  | start no earlier than 2012-04-10 |  | Sebastian Vetter | 28h | 28h |
| 74 | 2.1.4.12 | Beispiel-CSV für SuSa Import | 0.5d | 2012-05-14 A | 2012-05-15 A | 100% |  |  |  |  |  |  | start no earlier than 2012-04-10 |  | Benjamin Held | 4h | 4h |
| 75 | 2.1.4.13 | Merkblatt "Installationsvoraussetzungen" | 0.25d | 2012-04-11 | 2012-04-11 |  |  |  |  |  | 26.25d |  | start no earlier than 2012-04-10 |  | Benjamin Held | 2h |  |
| 76 | 2.1.4.14 | Firmenstammdaten: Auswahl Mutterunternehmen | 1d | 2012-04-11 A | 2012-04-12 A | 100% |  |  |  |  |  |  | start no earlier than 2012-04-10 |  | Benjamin Held | 8h | 8h |
| 77 | 2.1.4.15 | Globale Suche nach Feldern | 2w? | 2012-04-10 A | 2012-04-24 A | 100% |  |  |  |  |  |  | start no earlier than 2012-04-10 |  | Márton Garai | 80h | 80h |
| 78 | 2.1.4.16 | SuSa Import / Vorlagen | 4d | 2012-04-10 A | 2012-04-24 A | 100% |  |  |  |  |  |  |  |  | Márton Garai | 32h | 32h |
| 79 | 2.1.4.17 | InvariantCulture Problem | 6.83d | 2012-04-23 A | 2012-05-02 A | 100% |  |  |  |  |  |  | start no earlier than 2012-04-23 |  | Benjamin Held | 54.63h | 54.63h |
| 80 | 2.1.4.18 | Firmenstammdaten mit in Navigation | 1d? | 2012-03-19 A | 2012-03-20 A | 100% |  |  |  |  |  |  |  |  | Benjamin Held | 8h | 8h |
| 81 | 2.1.4.19 | Fenster öffnen nach Update mit Veränderungspdf | 1d? | 2012-03-19 A | 2012-03-20 A | 100% |  |  |  |  |  |  |  |  |  |  |  |

Notes:
- 56: Globale Option zum ein-auschalten
- 58: insb. Berechtigungen und Vorlagen
- 67: Probleme mit Berechtigungen beseitigen
- 70: Logo wurde noch nicht in alle Tools integriert
- 76: Es fehlt ebenso Körperschaft-/einkommenssteuerliche Organschaft
- 77: 1. If no report is selected, then an exception is generated this should not happen. / 2.If no results are found, please provide a message box stating that, because otherwise the user thinks the search did not work. / 3.Instead of creating a modal dialog please create a normal dialog which is above everything else. I added the Flag TopMost=True in your dialog. You need to change dlgGlobalSearch.ShowDialog() to dlgGlobalSearch.Show(). The reason why I did not change this, is because your logic at the moment depends on the fact that the dialog is modal as you implemented your selection logic right after the ShowDialog. / 4.The search dialog should not close when you click on a search result, so that the user can choose to jump to different results without recreating his search. / 5.The company details should be searchable as well / Create different options to allow the user to specify if he wants to search in labels or the id or in both.
- 78: Einfache Vorlagen ohne Editieroption / Code unschön: AccountsProfileManager.SelectedElement ist sehr unschön
- 79: Änderungen in values_gaap, values_gcd, values_gcd_company und Logtabellen. / Für Export von Pdf und Xbrl Culture selbstständig definieren

| ID | WBS | Task | Duration | Start | Finish | Predecessors | Complete | Remaining | Total slack | Constraint | Resources | Work | Actual work |
| --- | --- | --- | --- | --- | --- | --- | --- | --- | --- | --- | --- | --- | --- |
| 82 | 2.1.5 | **Betriebsprüfungen** | 1.5d? | 2012-03-19 A | 2012-03-20 |  | 85% | 0.23d? | 42.5d |  |  | 92h | 92h |
| 83 | 2.1.5.1 | Umbuchungen erstellen in Bilanz+GuV | 1d? | 2012-03-19 A | 2012-03-20 A |  | 100% |  |  |  | Dibbert [250%] | 20h | 20h |
| 84 | 2.1.5.2 | Umbuchungen erstellen in Überleitungsrechnung | 1d? | 2012-03-19 A | 2012-03-20 A |  | 100% |  |  |  | Dibbert [250%] | 20h | 20h |
| 85 | 2.1.5.3 | Übernahme für die Folgejahre | 1d? | 2012-03-19 A | 2012-03-20 A |  | 100% |  |  |  | Sebastian Vetter [200%] | 16h | 16h |
| 86 | 2.1.5.4 | GUI entsprechend erweitern | 1d? | 2012-03-19 A | 2012-03-20 A |  | 100% |  |  |  | Dibbert [300%] | 24h | 24h |
| 87 | 2.1.5.5 | Aufgabe genauer ausarbeiten | 1.5d? | 2012-03-19 A | 2012-03-20 A |  | 100% |  |  |  | Benjamin Held | 12h | 12h |
| 88 | 2.1.5.6 | BP Modus nur nutzbar für gesendeten Bericht | 1d? | 2012-03-19 | 2012-03-20 |  |  |  | 43d |  |  |  |  |
| 89 | 2.1.6 | **Mapping Templates** | 35.14d? | 2012-03-19 A | 2012-05-08 |  | 74% | 9.11d? | 8.86d |  |  | 32h | 16h |
| 90 | 2.1.6.1 | Springen zu Taxonomieposition bei Klick auf ein Konto | 2.86d | 2012-05-03 A | 2012-05-08 A |  | 100% |  |  | start no earlier than 2012-04-10 | Dibbert [70%] | 16h | 16h |
| 91 | 2.1.6.2 | Erweitern von Vorlagen fixen | 1d? | 2012-03-19 | 2012-03-20 |  |  |  | 43d |  |  | 16h |  |
| 92 | 2.1.7 | **Release** | 22.75d? | 2012-04-10 A | 2012-05-11 |  | 51% | 11.22d? | 5.25d |  |  | 192h | 94h |
| 93 | 2.1.7.1 | Update Setup | 0.36d | 2012-05-10 | 2012-05-10 |  |  |  | 6.5d | start no earlier than 2012-04-10 | Dibbert [70%] | 2h |  |
| 94 | 2.1.7.2 | Datenbankupdate | 4.69d | 2012-04-10 A | 2012-04-27 A |  | 100% |  |  |  | Sebastian Vetter [80%] | 30h | 30h |
| 95 | 2.1.7.3 | Testen des Release | 20d? | 2012-04-12 A | 2012-05-11 |  | 40% | 12d? | 5.25d | start no earlier than 2012-04-10 | Benjamin Held | 160h | 64h |
| 96 | 2.1.8 | **Handbuch** | 4.33d | 2012-04-26 A | 2012-05-03 A |  | 100% |  |  |  |  | 24.32h | 24.32h |
| 97 | 2.1.8.1 | Einweisung lys | 4.29d | 2012-04-26 A | 2012-05-03 A | 73 | 100% |  |  |  | Dibbert [70%] | 24h | 24h |
| 98 | 2.1.8.2 | Oracle | 0.01d | 2012-05-03 A | 2012-05-03 A | 97 | 100% |  |  |  | Strutzberg | 0.08h | 0.08h |
| 99 | 2.1.8.3 | Beschreibung für Splittkonten zusammenführen/löschen offenbar unklar | 0.08h | 2012-05-03 A | 2012-05-03 A | 98 | 100% |  |  |  | Strutzberg | 0.08h | 0.08h |
| 100 | 2.1.8.4 | Anmerkungen von Frau Schubert | 0.08h | 2012-05-03 A | 2012-05-03 A | 99 | 100% |  |  |  | Strutzberg | 0.08h | 0.08h |
| 101 | 2.1.8.5 | Änderungen neues Release (Überleitungsrechnung, Hypercubes, Export) | 0.01d | 2012-05-03 A | 2012-05-03 A | 100 | 100% |  |  |  | Strutzberg | 0.08h | 0.08h |
| 102 | 2.1.9 | **Export** | 11.25d | 2012-04-10 A | 2012-04-25 A |  | 100% |  |  |  |  | 50h | 50h |
| 103 | 2.1.9.1 | Export Anhang und ggf. weiterer fehlender Berichtsbestandteile | 5d | 2012-04-10 A | 2012-04-17 A |  | 100% |  |  | start no earlier than 2012-03-22 | Márton Garai | 40h | 40h |
| 104 | 2.1.9.2 | Export von nicht zugeordneten Konten | 1d | 2012-04-10 A | 2012-04-11 A |  | 100% |  |  | start no earlier than 2012-04-10 | Márton Garai | 8h | 8h |
| 105 | 2.1.9.3 | Speichern der Konfiguration in Userconfig? | 0.25d | 2012-04-25 A | 2012-04-25 A |  | 100% |  |  | start no earlier than 2012-04-25 | Márton Garai | 2h | 2h |

Notes:
- 99: Supportfall vom 22.12.2011
- 100: Inhaltliches: / S. 30 letzter Absatz: nach Import einer neuen Liste gehen Zuordnungen der alten Liste verloren? / --> unklare Formulierung / S. 44 Abbildung 54: nicht aktuell / S. 50 unter Abbildung 63: Alternativ zum Dreieck auch Doppelklick zum Öffnen der Positionen möglich / S. 61 letzter Satz: weißes Kästchen für manuelle Werteeingabe = veraltet, jetzt Elementedetails / S. 63 über Abbildung 89: bestimmten Position - nicht Konto - innerhalb der Bilanz... / S. 66 Ende + Abbildung 97: gelbe Markierung von Konten, die einen Überleitungswert haben? / Kapitel 12: nicht aktuell (nun mehrere Listen in einer Vorlage integrierbar + Anzeige von zu übermittelden / Konten + davon-Positionen) / Kapitel 16: nicht aktuell - csv-Export fehlt vollständig / Rechtschreibung/Optik: / S. 12 erste Zeile: Rechtschreibung / S. 54 Abbildung 73: hier fehlt Zeilenumbruch zwischen Abbildungunterschrift und Absatz / S. 68 Abschnitt 11.4 erster Satz: Rechtschreibung / im Abbildungsverzeichnis: Abbildung 84 / eventuell zu ergänzen: / -Hinweis, das derzeit keine (Test-) Übertragung möglich ist (da EriC nicht aktuell / Update ERIC für Mai geplant) / -Kontosplittung auch direkt in Anzeige der Konten möglich (nicht extra über SuSa bearbeiten) / -Hinweis auf Rechte, die ein Administrator besitzt (kein Export etc.) / -Datenbank / SQL Server Authentifizierg / Hinweis das noch nicht möglich / - ORACLE Installation
- 105: ·Save configuration of export options when the user exports the pdf / ·Save config in the table Sebastian is currently creating for his global options (ask him about it) / ·Restore config the next time

| ID | WBS | Task | Duration | Start | Finish | Predecessors | Complete | Remaining | Total slack | Constraint | Resources | Work | Actual work |
| --- | --- | --- | --- | --- | --- | --- | --- | --- | --- | --- | --- | --- | --- |
| 106 | 2.1.10 | **Validierung** | 7.72d | 2012-04-10 A | 2012-04-19 A |  | 100% |  |  |  |  | 33.58h | 33.58h |
| 107 | 2.1.10.1 | Warnhinweise werden bei Reportwechsel nicht gelöscht | 0.16d | 2012-04-10 A | 2012-04-10 A |  | 100% |  |  |  | Sebastian Vetter [80%] | 1h | 1h |
| 108 | 2.1.10.2 | Problem mit Warnhinweisen | 0.08d | 2012-04-10 A | 2012-04-10 A |  | 100% |  |  |  | Sebastian Vetter [80%] | 0.5h | 0.5h |
| 109 | 2.1.10.3 | Einarbeitung aktueller technischer Leitfaden | 3.75d | 2012-04-10 A | 2012-04-13 A |  | 100% |  |  |  | Sebastian Vetter [80%] | 24h | 24h |
| 110 | 2.1.10.4 | Option zum Ausblenden von Warnungen | 1.25d | 2012-04-10 A | 2012-04-19 A |  | 100% |  |  |  | Sebastian Vetter [80%] | 8h | 8h |
| 111 | 2.1.10.5 | Prüfung "Firmensitz" (offenbar kein Plfichtfeld mehr) | 0.01d | 2012-04-13 A | 2012-04-13 A | 109 | 100% |  |  | start no earlier than 2012-04-10 | Sebastian Vetter [80%] | 0.08h | 0.08h |
| 112 | 2.1.11 | **Import** | 10d? | 2012-04-10 A | 2012-04-24 A |  | 100% |  |  |  |  | 80h | 80h |
| 113 | 2.1.11.1 | Import Stammdaten | 10d? | 2012-04-10 A | 2012-04-24 A |  | 100% |  |  | start no earlier than 2012-04-10 | Arpad Bodza | 80h | 80h |
| 114 | 2.1.12 | **Überleitungsrechnung** | 24d? | 2012-04-10 A | 2012-05-15 A |  | 100% |  |  |  |  | 208h | 208h |
| 115 | 2.1.12.1 | Überarbeitung der aktuellen Überleitungsrechnung | 12d? | 2012-04-10 A | 2012-04-26 A |  | 100% |  |  |  | Dibbert | 96h | 96h |
| 116 | 2.1.12.2 | Import Überleitungsrechung | 8d? | 2012-05-03 A | 2012-05-15 A | 117 | 100% |  |  | start no earlier than 2012-04-10 | Gabor Bauer | 64h | 64h |
| 117 | 2.1.12.3 | Export | 4d? | 2012-04-26 A | 2012-05-03 A | 115 | 100% |  |  | start no earlier than 2012-04-10 | Gabor Bauer | 32h | 32h |
| 118 | 2.1.12.4 | Vorjahreswerte übernehmen | 2d? | 2012-05-08 A | 2012-05-10 A |  | 100% |  |  | start no earlier than 2012-04-10 | Dibbert | 16h | 16h |
| 119 | 2.1.13 | **Export** | 15.78d | 2012-04-17 A | 2012-05-09 A |  | 100% |  |  |  |  | 41h | 41h |
| 120 | 2.1.13.1 | Report mit allen gesendeten Daten (inhl. 1:1 Entsprechung zu XBRL-Export) | 5d | 2012-04-17 A | 2012-05-09 A |  | 100% |  |  | start no earlier than 2012-04-10 | Márton Garai | 40h | 40h |
| 121 | 2.1.13.2 | In der Ausgabe als PDF berechnete Felder z.B. durch Fettdruck hervorheben | 0.13d | 2012-05-09 A | 2012-05-09 A |  | 100% |  |  | start no earlier than 2012-04-10 | Márton Garai [96.2%] | 1h | 1h |
| 122 | 2.1.14 | **Berechtigungen** | 41d? | 2012-03-19 A | 2012-05-16 A |  | 100% |  |  |  |  | 120h | 120h |
| 123 | 2.1.14.1 | Unternehmsadmins | 10d? | 2012-04-10 A | 2012-04-24 A |  | 100% |  |  | start no earlier than 2012-04-10 | Gabor Bauer | 80h | 80h |
| 124 | 2.1.14.2 | Anzeige globale Übersicht (Welche Benutzer/Rollen besitzen ein bestimmtes Recht) | 3d? | 2012-04-24 A | 2012-05-16 A | 123 | 100% |  |  |  | Gabor Bauer | 24h | 24h |
| 125 | 2.1.14.3 | Problematik mit Besitzern von Reports lösen | 1d? | 2012-03-19 A | 2012-03-20 A |  | 100% |  |  |  | Gabor Bauer; Dibbert | 16h | 16h |
| 126 | 2.1.15 | **Backup** | 8.33d? | 2012-04-12 A | 2012-04-24 A |  | 100% |  |  |  |  | 40h | 40h |
| 127 | 2.1.15.1 | Backup Service Programm | 5d? | 2012-04-12 A | 2012-04-19 A |  | 100% |  |  | start no earlier than 2012-04-12 | Marcus Gerlach [60%] | 24h | 24h |
| 128 | 2.1.15.2 | Backup GUI | 3.33d? | 2012-04-19 A | 2012-04-24 A | 127 | 100% |  |  |  | Marcus Gerlach [60%] | 16h | 16h |
| 129 | 2.1.16 | **RöverBrönner** | 2d? | 2012-03-19 A | 2012-03-21 |  | 71% | 0.57d? | 42d |  |  | 20h | 12h |
| 130 | 2.1.16.1 | Optionale Dinge ausblenden (global) | 2d? | 2012-03-19 A | 2012-03-21 |  | 50% | 1d? | 42d |  |  | 16h | 8h |
| 131 | 2.1.16.2 | Pdf Export: Hinweis, dass Felder mit NIL gefüllt werden | 1d? | 2012-03-19 A | 2012-03-20 A |  | 100% |  |  |  |  |  |  |
| 132 | 2.1.16.3 | Differenz Aktiva/Passiva anzeigen | 0.5d? | 2012-03-19 A | 2012-03-19 A |  | 100% |  |  |  |  | 4h | 4h |

Notes:
- 108: Hat man bei einer steuerlich unzulässigen Position einen Steuerbilanzwert != 0, dann erscheint daneben ein rotes Warndreieck und auch in den übergeordneten Knoten (soweit alles korrekt). Entfernt man dann aber den Fehler und validiert neu, dann wird das Warndreieck in den Überpositionen nicht gelöscht
- 110: Auf GUI Ebene noch nicht optimal umgesetzt
- 113: 1. The provided Stammdatenimport_Vorlage.csv file should be imported without any errors and fill all the fields in the company details / 2.Create an assistant dialog like the one in the attachment. You can use our AssistantControl which helps you to implement the navigation. Create a usercontrol for each page and a model for the complete dialog. In this assistant on the first page the users selects his CSV files with the company details. On the second page he gets a preview of the first csv file and is able to change some settings (you can copy this more or less from BalListImpAssistPage2.xaml). The CsvReader supports the three options. On page 3 the users sees all errors with wrong taxonomie ids or incorrect formats for dates for example. On page 4 the user can map the combobox values, for example for the Rechtsform (legal form). Page 5 is just a short summary page. / 3.When the company already exists - update the information (warn user upfront)
- 115: Automatische Buchungen
- 120: 1:1-Entsprechung zu XBRL Export / nicht gesendete Daten (z.B. Benutzerkommentare) nicht enthalten! / Bei Kontennachweise senden, entsprechende Konten mitsenden / NIL Werte exportieren bei Pflichtfeldern / ·Create option to export exactly as XBRL export: / ·Do not export any user comments / ·If the option "send account balances" is checked for a position in the taxonomy, then export accounts as well, otherwise do not export the accounts / ·Export NIL values for all mandatory fields / ·Export all fields which are filled / Current problems: / Überleitungsrechnung muss exportiert werden
- 123: ·Superadmin can assign users as company admins (CA) for n companies / ·CAs can create new users and new company roles and give rights to users / ·CA sees only user and roles with less rights then the CA himself / ·CA can give only rights on companies he is a company admin of
- 124: TODO: Wenn man durch Benutzereinstellungen erlaubt/verbietet ist der Text nicht gut.

| ID | WBS | Task | Duration | Start | Finish | Complete | Remaining | Total slack |
| --- | --- | --- | --- | --- | --- | --- | --- | --- |
| 133 | 2.1.17 | **Hypercubes** | 1d? | 2012-03-19 A | 2012-03-20 A | 100% |  |  |
| 134 | 2.1.17.1 | Anlagespiegel als Tabelle bearbeitbar | 1d? | 2012-03-19 A | 2012-03-20 A | 100% |  |  |
| 135 | 2.1.18 | **Features nach Revision** | 1d? | 2012-03-19 A | 2012-03-20 A | 100% |  |  |
| 136 | 2.1.18.1 | Symbolleiste ändern: Info mit in Hilfe Feld. Einstellungen und Ansichten separieren. Hilfe nach ganz rechts verschieben. Ansicht ändern Knopf. Pdf als extra Knopf (Bericht erstellen) | 1d? | 2012-03-19 A | 2012-03-20 A | 100% |  |  |
| 137 | 2.1.18.2 | Die Zusatzprogramme sind alle aus dem eBilanz-Kit heraus startbar. Admin Button oben in der Menüleiste | 1d? | 2012-03-19 A | 2012-03-20 A | 100% |  |  |
| 138 | 2.1.18.3 | Suche: Letzte 5 Suchen merken | 1d? | 2012-03-19 A | 2012-03-20 A | 100% |  |  |
| 139 | 2.1.18.4 | Suche: Just in Time Suche | 1d? | 2012-03-19 A | 2012-03-20 A | 100% |  |  |
| 140 | 2.1.18.5 | Filter immer anzeigen, nur die erweiterten Optionen auf Knopfdruck | 1d? | 2012-03-19 A | 2012-03-20 A | 100% |  |  |
| 141 | 2.1.18.6 | Differenz zwischen Aktiva/Passiva grün bzw. rot darstellen, eine Schriftgröße größer | 1d? | 2012-03-19 A | 2012-03-20 A | 100% |  |  |
| 142 | 2.1.18.7 | SuSa Import: Spalten farbig markieren beim zuordnen | 1d? | 2012-03-19 A | 2012-03-20 A | 100% |  |  |
| 143 | 2.1.18.8 | Susa Import: Beispiel CSV als erkennbarer Button und unten in den Assistenten | 1d? | 2012-03-19 A | 2012-03-20 A | 100% |  |  |
| 144 | 2.1.18.9 | Pdf Export Layout überarbeiten | 1d? | 2012-03-19 A | 2012-03-20 A | 100% |  |  |
| 145 | 2.1.18.10 | Info Leiste unten standardmäßig eingeklappt | 1d? | 2012-03-19 A | 2012-03-20 A | 100% |  |  |
| 146 | 2.1.19 | **Vedder** | 1d? | 2012-03-19 | 2012-03-20 |  |  | 43d |
| 147 | 2.1.19.1 | Bezeichnungsänderung: Virtuelle Konten sollten besser berechnete Konten heißen | 1d? | 2012-03-19 | 2012-03-20 |  |  | 43d |
| 148 | 2.1.19.2 | Importieren der Überleitungsrechnung ist zu technisch. Vorschlag von Herrn Vedder: | 1d? | 2012-03-19 | 2012-03-20 |  |  | 43d |
| 149 | 2.1.20 | **Überleitungsrechnungsdialog** | 1d? | 2012-03-19 A | 2012-03-20 | 67% | 0.33d? | 43d |
| 150 | 2.1.20.1 | Validierung einbauen | 1d? | 2012-03-19 | 2012-03-20 |  |  | 43d |
| 151 | 2.1.20.2 | Import der Überleitungsrechnung muss verbessert werden | 1d? | 2012-03-19 | 2012-03-20 |  |  | 43d |
| 152 | 2.1.20.3 | Steuerbilanz direkt eingeben können, Wechsel des Modus. Nachfrage beim ersten Aufruf | 1d? | 2012-03-19 | 2012-03-20 |  |  | 43d |
| 153 | 2.1.20.4 | Einzelne Datensätze nach links in Baumansicht, ähnlich wie Navigation (Oberknoten - Überleitungsrechnung) | 1d? | 2012-03-19 A | 2012-03-20 A | 100% |  |  |
| 154 | 2.1.20.5 | Über Neu, bekommt man einen Assistenten mit dem man neue Datensätze anlegen kann. Man wählt direkt die Art der Überleitung aus und hat einen Haken, ob es eine freie Überleitung sein soll. | 1d? | 2012-03-19 A | 2012-03-20 A | 100% |  |  |
| 155 | 2.1.20.6 | Über Ändern, kann man Positionen umbenennen oder die Erläuterung ändern | 1d? | 2012-03-19 A | 2012-03-20 A | 100% |  |  |
| 156 | 2.1.20.7 | Vorjahreswerte, können über Ansicht wechseln eingetragen werden (ins Menü) | 1d? | 2012-03-19 A | 2012-03-20 A | 100% |  |  |
| 157 | 2.1.20.8 | Fetten Bereich mit Wasserzeichen zum Drag&Drop | 1d? | 2012-03-19 A | 2012-03-20 A | 100% |  |  |
| 158 | 2.1.20.9 | Globale Suche in Überleitungsrechnung | 1d? | 2012-03-19 A | 2012-03-20 A | 100% |  |  |

| ID | WBS | Task | Duration | Start | Finish | Complete | Remaining | Total slack | Work |
| --- | --- | --- | --- | --- | --- | --- | --- | --- | --- |
| 159 | 2.1.21 | **Assistent** | 1d? | 2012-03-19 A | 2012-03-20 | 75% | 0.25d? | 43d |  |
| 160 | 2.1.21.1 | Erste Seite: Bestehendes System auswählen oder neues Anlegen. System auswählen öffnet neuen Dialog wo man auch filtern kann | 1d? | 2012-03-19 A | 2012-03-20 A | 100% |  |  |  |
| 161 | 2.1.21.2 | Danach das gleiche für Unternehmen. | 1d? | 2012-03-19 A | 2012-03-20 A | 100% |  |  |  |
| 162 | 2.1.21.3 | Wird neues Unternehmen erstellt, dann Stammdaten Fenster in gleicher Größe wie Assistent Fenster | 1d? | 2012-03-19 A | 2012-03-20 A | 100% |  |  |  |
| 163 | 2.1.21.4 | Danach neue Summen- und Saldenliste hochladen (Testliste bereitstellen) | 1d? | 2012-03-19 | 2012-03-20 |  |  | 43d |  |
| 164 | 2.2 | Vorlagendialog | 1d? | 2012-03-19 A | 2012-03-20 A | 100% |  |  |  |
| 165 | 2.3 | Testdatengenerierung | 1d? | 2012-04-09 A | 2012-04-10 A | 100% |  |  |  |
| 166 | 2.4 | Neue Taxonomie | 1d? | 2012-04-09 A | 2012-04-10 A | 100% |  |  |  |
| 167 | 2.5 | Merken in welchem Menütab man war beim Restart | 1d? | 2012-04-09 A | 2012-04-10 A | 100% |  |  |  |
| 168 | 2.6 | ERIC nicht mehr durchführen, stattdessen Meldung alles erfolgreich. | 1d? | 2012-04-09 A | 2012-04-10 A | 100% |  |  |  |
| 169 | 2.7 | Bei nicht upgedateter Datenbank, kommt Meldung, da optional Datenbanktool starten können | 1d? | 2012-04-09 A | 2012-04-10 A | 100% |  |  |  |
| 170 | 2.8 | Filter: Control mit Default Text | 1d? | 2012-04-09 A | 2012-04-10 A | 100% |  |  |  |
| 171 | 2.9 | Oracle testen | 1d? | 2012-04-09 A | 2012-04-10 A | 100% |  |  |  |
| 172 | 2.10 | Neuen User anlegen: Sollte Änderungsdokument nicht sehen | 1d? | 2012-04-09 A | 2012-04-10 A | 100% |  |  |  |
| 173 | 2.11 | Berichte ändern: Berechtigungen mit einbeziehen | 1d? | 2012-04-09 A | 2012-04-10 A | 100% |  |  |  |
| 174 | 2.12 | **V1.7** | 10d? | 2012-04-09 | 2012-04-23 |  |  | 19d | 739.75h |
| 175 | 2.12.1 | **Bundesanzeiger** | 10d | 2012-04-09 | 2012-04-23 |  |  | 19d | 442h |
| 176 | 2.12.1.1 | Verlinkung Formular / Info für Registrierung bei Bundesanzeiger | 0.12d | 2012-04-09 | 2012-04-09 |  |  | 28.88d |  |
| 177 | 2.12.1.2 | **Clientverwaltung** | 3d | 2012-04-09 | 2012-04-12 |  |  | 26d | 78h |
| 178 | 2.12.1.2.1 | Neuen Client anlegen | 4h | 2012-04-09 | 2012-04-09 |  |  | 28.5d | 4h |
| 179 | 2.12.1.2.2 | Client löschen | 2h | 2012-04-09 | 2012-04-09 |  |  | 28.75d | 2h |
| 180 | 2.12.1.2.3 | Client ändern | 4h | 2012-04-09 | 2012-04-09 |  |  | 28.5d | 4h |
| 181 | 2.12.1.2.4 | Clients anzeigen / exist. Client zuordnen | 4h | 2012-04-09 | 2012-04-09 |  |  | 28.5d | 4h |
| 182 | 2.12.1.2.5 | Datenabgleich bei Änderungen über Webinterface, opt. Datenabgleich | 16h | 2012-04-09 | 2012-04-11 |  |  | 27d | 16h |
| 183 | 2.12.1.2.6 | Datenablgeich Client -> Unternehmen | 8h | 2012-04-09 | 2012-04-10 |  |  | 28d | 8h |
| 184 | 2.12.1.2.7 | GUI | 16h | 2012-04-09 | 2012-04-11 |  |  | 27d | 16h |
| 185 | 2.12.1.2.8 | Sonstiges | 24h | 2012-04-09 | 2012-04-12 |  |  | 26d | 24h |

| ID | WBS | Task | Duration | Start | Finish | Total slack | Work |
| --- | --- | --- | --- | --- | --- | --- | --- |
| 186 | 2.12.1.3 | **Auftragsverwaltung** | 10d | 2012-04-09 | 2012-04-23 | 19d | 216h |
| 187 | 2.12.1.3.1 | Recherche/Einarbeitung MTOM-Format / Binärdaten | 8h | 2012-04-09 | 2012-04-10 | 28d | 8h |
| 188 | 2.12.1.3.2 | XBRL Generierung | 40h | 2012-04-09 | 2012-04-16 | 24d | 40h |
| 189 | 2.12.1.3.3 | Validierung | 16h | 2012-04-09 | 2012-04-11 | 27d | 16h |
| 190 | 2.12.1.3.4 | Senden (inkl. GUI) | 32h | 2012-04-09 | 2012-04-13 | 25d | 32h |
| 191 | 2.12.1.3.5 | Anlegen, Löschen, etc. von Aufträgen (inkl. GUI) | 40h | 2012-04-09 | 2012-04-16 | 24d | 40h |
| 192 | 2.12.1.3.6 | Datenabgleich Report -> Bundesanzeiger-Auftrag | 80h | 2012-04-09 | 2012-04-23 | 19d | 80h |
| 193 | 2.12.1.4 | **Sonstiges** | 10d | 2012-04-09 | 2012-04-23 | 19d | 148h |
| 194 | 2.12.1.4.1 | Einbindung AppConfig | 4h | 2012-04-09 | 2012-04-09 | 28.5d | 4h |
| 195 | 2.12.1.4.2 | Anbindung Berechtigungssystem | 24h | 2012-04-09 | 2012-04-12 | 26d | 24h |
| 196 | 2.12.1.4.3 | Logging | 40h | 2012-04-09 | 2012-04-16 | 24d | 40h |
| 197 | 2.12.1.4.4 | Test und Debugging | 80h | 2012-04-09 | 2012-04-23 | 19d | 80h |
| 198 | 2.12.2 | Vorlagen (Kontogruppen, Kontoaufteilungen) aus letztem Jahr übernehmen | 2d? | 2012-04-09 | 2012-04-11 | 27d | 40h |
| 199 | 2.12.3 | **SuSa Import** | 1d? | 2012-04-09 | 2012-04-10 | 28d | 9.75h |
| 200 | 2.12.3.1 | Kategorien für SuSas | 1d? | 2012-04-09 | 2012-04-10 | 28d |  |
| 201 | 2.12.3.2 | Neue Spalte importieren können (Steuerkennzeichen) | 1d? | 2012-04-09 | 2012-04-10 | 28d |  |
| 202 | 2.12.3.3 | Unterstützung TAB als Trennzeichen | 1d? | 2012-04-09 | 2012-04-10 | 28d | 0.5h |
| 203 | 2.12.3.4 | Anzeige von Kontoständen bei CSV-Vorschau rechtsbündig | 1d? | 2012-04-09 | 2012-04-10 | 28d | 0.25h |
| 204 | 2.12.3.5 | Automatische Erkennung von Währungsinformationen (Kontostände in der Form „1.324,99 €“) | 1d? | 2012-04-09 | 2012-04-10 | 28d | 1h |
| 205 | 2.12.3.6 | Option für Neuimport SUSA bei Änderung von Werten | 1d? | 2012-04-09 | 2012-04-10 | 28d | 8h |
| 206 | 2.12.3.7 | RFBILA Import | 1d? | 2012-04-09 | 2012-04-10 | 28d |  |
| 207 | 2.12.4 | **Validierung** | 1d? | 2012-04-09 | 2012-04-10 | 28d | 40h |
| 208 | 2.12.4.1 | Davon Position darf nicht größer sein als Obersumme | 1d? | 2012-04-09 | 2012-04-10 | 28d |  |
| 209 | 2.12.4.2 | Fehlerreport / Navigation durch alle Fehler | 1d? | 2012-04-09 | 2012-04-10 | 28d | 40h |

Notes:
- 187: ggf. Nutzung MS Web Services Enhancements 3.0?
- 188: ·Prüfung, ob auch Gesamt-XBRL angegeben werden kann (Dateityp 1?) / ·Prüfung, welche Berichtsbestandteile notwendig bzw. nicht erlaubt sind (abhängig von Unternehmensgröße?)
- 205: Aufwand vor allem wegen GUI zur Anzeige von Inkonsistenzen

| ID | WBS | Task | Duration | Start | Finish | Total slack | Constraint | Resources | Work |
| --- | --- | --- | --- | --- | --- | --- | --- | --- | --- |
| 210 | 2.12.5 | **Sonstiges** | 2.5d? | 2012-04-09 | 2012-04-11 | 26.5d |  |  | 24h |
| 211 | 2.12.5.1 | Geschäftsjahresproblematik / Gesellschafterwechsel: mehrere Teilgeschäftsjahre pro Gjahr, Liste Gesellschafter? | 1d? | 2012-04-09 | 2012-04-10 | 28d |  |  | 16h |
| 212 | 2.12.5.2 | Lesezeichen im eBilanz-Kit | 1d? | 2012-04-09 | 2012-04-10 | 28d |  |  |  |
| 213 | 2.12.5.3 | Active Directory ist zu langsam, vorher filtern | 1d? | 2012-04-09 | 2012-04-10 | 28d |  |  |  |
| 214 | 2.12.5.4 | mehrere zugeordnete Konten in Taxonomie Knoten selektieren können (mit SHIFT Taste!) | 1d | 2012-04-10 | 2012-04-11 | 26.5d | start no earlier than 2012-04-10 | Benjamin Held | 8h |
| 215 | 2.12.5.5 | sontige Betriebliche Aufwendungen: Wenn Konto mit falschem Vorzeichen zugeordnet wird: Warnung | 1d? | 2012-04-09 | 2012-04-10 | 28d |  |  |  |
| 216 | 2.12.6 | **Import** | 1d? | 2012-04-09 | 2012-04-10 | 28d |  |  | 184h |
| 217 | 2.12.6.1 | Import von Textfeldern aus RTF-Dokumenten | 1d? | 2012-04-09 | 2012-04-10 | 28d |  |  | 80h |
| 218 | 2.12.6.2 | Import von XBRL Instanzdokumenten | 1d? | 2012-04-09 | 2012-04-10 | 28d |  |  | 104h |
| 219 | 2.12.7 | **Synchronisation von Datenbeständen** | 1d? | 2012-04-09 | 2012-04-10 | 28d |  |  |  |
| 220 | 2.12.7.1 | Export von gewissen Reports | 1d? | 2012-04-09 | 2012-04-10 | 28d |  |  |  |
| 221 | 2.12.7.2 | Spätere Synchronisation der Reports | 1d? | 2012-04-09 | 2012-04-10 | 28d |  |  |  |
| 222 | 2.12.8 | **Multiuser Fähigkeit verbessern** | 1d? | 2012-04-09 | 2012-04-10 | 28d |  |  |  |
| 223 | 2.12.8.1 | Synchronisation zwischen Benutzern | 1d? | 2012-04-09 | 2012-04-10 | 28d |  |  |  |
| 224 | 2.12.8.2 | Verhindern von Datenbank Inkonsistenzen | 1d? | 2012-04-09 | 2012-04-10 | 28d |  |  |  |
| 225 | 2.12.9 | **Status des Berichts** | 1d? | 2012-04-09 | 2012-04-10 | 28d |  |  |  |
| 226 | 2.12.9.1 | Verschiedene Statusse des Berichts festlegen können | 1d? | 2012-04-09 | 2012-04-10 | 28d |  |  |  |
| 227 | 2.12.9.2 | Freigabekonzept beim Senden | 1d? | 2012-04-09 | 2012-04-10 | 28d |  |  |  |
| 228 | 2.12.10 | **Rechte** | 1d? | 2012-04-09 | 2012-04-10 | 28d |  |  |  |
| 229 | 2.12.10.1 | Rechte auf Vorlagen | 1d? | 2012-04-09 | 2012-04-10 | 28d |  |  |  |
| 230 | 2.13 | **noch nicht geplant** | 29d? | 2012-04-09 | 2012-05-22 | 0d |  |  | 1084.5h |
| 231 | 2.13.1 | **Pdfexport** | 1d? | 2012-04-09 | 2012-04-10 | 28d |  |  |  |
| 232 | 2.13.1.1 | Nur bis bestimmter Ebene ausgeben | 1d? | 2012-04-09 | 2012-04-10 | 28d |  |  |  |
| 233 | 2.13.2 | Vorlagen für Identifikationsmerkmale des Berichts | 1d | 2012-04-09 | 2012-04-10 | 28d |  |  | 8h |

Notes:
- 214: Problematisch, da Multiselekt in Treeview regulär nicht möglich
- 233: Übernahme aus anderem Report

| ID | WBS | Task | Duration | Start | Finish | Predecessors | Total slack | Constraint | Resources | Work |
| --- | --- | --- | --- | --- | --- | --- | --- | --- | --- | --- |
| 234 | 2.13.3 | **Vorlagen (Kontenzuordnungen)** | 1d? | 2012-04-09 | 2012-04-10 |  | 28d |  |  | 71.5h |
| 235 | 2.13.3.1 | Prüfung auf Änderungen durch andere Benutzer beim Speichern | 1d? | 2012-04-09 | 2012-04-10 |  | 28d |  |  | 1h |
| 236 | 2.13.3.2 | Benutzereigene Vorlagen | 1d? | 2012-04-09 | 2012-04-10 |  | 28d |  |  | 8h |
| 237 | 2.13.3.3 | Berechtigungen auf Vorlagen | 1d? | 2012-04-09 | 2012-04-10 |  | 28d |  |  | 16h |
| 238 | 2.13.3.4 | Prüfung auf Inkonsistenzen beim Import | 1d? | 2012-04-09 | 2012-04-10 |  | 28d |  |  | 16h |
| 239 | 2.13.3.5 | Logging von Änderungen an Vorlagen | 1d? | 2012-04-09 | 2012-04-10 |  | 28d |  |  | 8h |
| 240 | 2.13.3.6 | Vorlage kopieren | 1d? | 2012-04-09 | 2012-04-10 |  | 28d |  |  | 4h |
| 241 | 2.13.3.7 | Anzeige SUSA Auswahl nur wenn mindestens 2 SUSAs existieren | 1d? | 2012-04-09 | 2012-04-10 |  | 28d |  |  | 0.5h |
| 242 | 2.13.3.8 | Konto aus Vorlage löschen | 1d? | 2012-04-09 | 2012-04-10 |  | 28d |  |  | 2h |
| 243 | 2.13.3.9 | Historisierung von Vorlagen | 1d? | 2012-04-09 | 2012-04-10 |  | 28d |  |  | 16h |
| 244 | 2.13.3.10 | Prüfung auf Inkonsistenzen beim Mapping / Zuordnung der gleichen Kto-Nr mit gleichem VZ auf unterschiedliche Positionen | 1d? | 2012-04-09 | 2012-04-10 |  | 28d |  |  |  |
| 245 | 2.13.4 | **Filter** | 1d? | 2012-04-09 | 2012-04-10 |  | 28d |  |  | 5h |
| 246 | 2.13.4.1 | hervorheben der gefundenen Felder | 1d? | 2012-04-09 | 2012-04-10 |  | 28d |  |  | 4h |
| 247 | 2.13.4.2 | Automatisches Zuklappen des Filterdialoges nach aktivieren eines Filters | 1d? | 2012-04-09 | 2012-04-10 |  | 28d |  |  | 1h |
| 248 | 2.13.5 | **Sonstiges** | 29d? | 2012-04-09 | 2012-05-22 |  | 0d |  |  | 109h |
| 249 | 2.13.5.1 | Sortierung / Filterung bei Anmeldung, Companies | 3d? | 2012-05-16 | 2012-05-22 |  | 0d | start no earlier than 2012-04-10 | Gabor Bauer | 24h |
| 250 | 2.13.5.2 | bei der Hinterlegung eines manuellen Wertes das Elementdetails bearbeiten Symbol ändern | 1d? | 2012-04-09 | 2012-04-10 |  | 28d |  |  | 1h |
| 251 | 2.13.5.3 | SQL Server / Windows-Authentifizierung | 0.08d | 2012-04-09 | 2012-04-09 |  | 28.92d |  |  | 2h |
| 252 | 2.13.5.4 | Adminkennwort bei Erstinstallation durch Kunden festlegen lassen | 1h? | 2012-04-09 | 2012-04-09 |  | 28.88d |  |  | 2h |
| 253 | 2.13.5.5 | Datenimport AL-Spiegel / EK-Spiegel | 2d | 2012-04-09 | 2012-04-11 |  | 27d |  |  | 80h |
| 254 | 2.13.5.6 | größere Schriftart (optional) | 1.43d | 2012-04-13 | 2012-04-17 | 73 | 23.07d |  |  |  |
| 255 | 2.13.6 | **Berechtigungen** | 1d? | 2012-04-09 | 2012-04-10 |  | 28d |  |  | 80h |
| 256 | 2.13.6.1 | weitere Detailrechte, z.B. für einzelne Berichtsbestandteile | 1d? | 2012-04-09 | 2012-04-10 |  | 28d |  |  | 80h |
| 257 | 2.13.6.2 | Überleitungsrechnung muss jedes Jahr neu gesperrt werden | 1d? | 2012-04-09 | 2012-04-10 |  | 28d |  |  |  |

Notes:
- 234: ·Prüfung auf Änderungen durch andere Benutzer beim Speichern / ·Benutzereigene Vorlagen / ·Prüfung auf Inkonsistenzen beim Import / ·Logging von Änderungen an Vorlagen / ·Vorlage kopieren / ·Springen zu Taxonomieposition bei Klick auf ein Konto / ·Anzeige SUSA Auswahl nur wenn mindestens 2 SUSAs existieren / ·dynamisches Laden der Elementinfos / ·Konto aus Vorlage löschen / ·Konto in Vorlage hinzufügen / ·Historisierung von Vorlagen / ·Prüfung auf Inkonsistenzen beim Mapping / Zuordnung der gleichen Kto-Nr mit gleichem VZ auf unterschiedliche Positionen
- 247: (bei geringer Auflösung verdeckt der Filterdialog sonst die Übersicht)

| ID | WBS | Task | Duration | Start | Finish | Total slack | Work |
| --- | --- | --- | --- | --- | --- | --- | --- |
| 258 | 2.13.7 | **SUSA-Import** | 1d? | 2012-04-09 | 2012-04-10 | 28d | 8h |
| 259 | 2.13.7.1 | Summenzielen erkennen und ignorieren | 1d? | 2012-04-09 | 2012-04-10 | 28d | 4h |
| 260 | 2.13.7.2 | Erweiterung mehrere Kopf/Fußzeilen, Summenzeilen? | 1d? | 2012-04-09 | 2012-04-10 | 28d | 4h |
| 261 | 2.13.8 | **Verbesserungsvorschläge aus Support** | 10d? | 2012-04-09 | 2012-04-23 | 19d | 200h |
| 262 | 2.13.8.1 | Setup erweitern: Installationsvoraussetzungen | 2w? | 2012-04-09 | 2012-04-23 | 19d | 80h |
| 263 | 2.13.8.2 | Hinweismeldungen / Tutorial für Benutzereinführung | 1w? | 2012-04-09 | 2012-04-16 | 24d | 120h |
| 264 | 2.13.9 | **Sonstiges** | 6.67d? | 2012-04-09 | 2012-04-17 | 22.33d | 435h |
| 265 | 2.13.9.1 | XBRL Fußnoten / Editor für Freitextfelder | 6.67d | 2012-04-09 | 2012-04-17 | 22.33d | 40h |
| 266 | 2.13.9.2 | Neuer Report überarbeiten | 1d? | 2012-04-09 | 2012-04-10 | 28d | 1h |
| 267 | 2.13.9.3 | Hinweis auf nicht zugeordnete Konten | 1d? | 2012-04-09 | 2012-04-10 | 28d | 1h |
| 268 | 2.13.9.4 | Report für nicht aufsummierte davon-Positionen mit Werten ungleich 0 | 1d? | 2012-04-09 | 2012-04-10 | 28d | 8h |
| 269 | 2.13.9.5 | Undo-Funktionalität | 1d? | 2012-04-09 | 2012-04-10 | 28d | 120h |
| 270 | 2.13.9.6 | autom. Scrollen bei Drag&Drop / Unilever | 1d? | 2012-04-09 | 2012-04-10 | 28d | 28h |
| 271 | 2.13.9.7 | Freigabekonzept für Reports / Beiersdorf | 1d? | 2012-04-09 | 2012-04-10 | 28d | 80h |
| 272 | 2.13.9.8 | Überarbeiten Dialoge Kapitalkontenbestände | 1d? | 2012-04-09 | 2012-04-10 | 28d | 40h |
| 273 | 2.13.9.9 | Übernehmen Kapitalkontenbestände aus Vorjahr (Anfangsbestand) | 1d? | 2012-04-09 | 2012-04-10 | 28d | 32h |
| 274 | 2.13.9.10 | Warnung bei Änderung der Firmenstammdaten im Report (globale Auswirkungen!) | 1d? | 2012-04-09 | 2012-04-10 | 28d | 1h |
| 275 | 2.13.9.11 | AD-Gruppen | 1d? | 2012-04-09 | 2012-04-10 | 28d | 56h |
| 276 | 2.13.9.12 | Datenbankmigration (Prüfung insb. Oracle) | 1d? | 2012-04-09 | 2012-04-10 | 28d |  |
| 277 | 2.13.9.13 | Vorjahresvergleich | 1d? | 2012-04-09 | 2012-04-10 | 28d | 20h |
| 278 | 2.13.9.14 | Nachfrage ob Konten gruppiert werden sollen falls mehr als x Konten verschoben werden | 1d? | 2012-04-09 | 2012-04-10 | 28d | 8h |
| 279 | 2.13.10 | **Erweiterung und Zusatzmodule** | 1d? | 2012-04-09 | 2012-04-10 | 28d |  |
| 280 | 2.13.10.1 | Servervariante (Sicherheitsproblematik) | 1d? | 2012-04-09 | 2012-04-10 | 28d |  |
| 281 | 2.13.10.2 | Übermittlung der Unternehmenssteuern | 1d? | 2012-04-09 | 2012-04-10 | 28d |  |
| 282 | 2.13.10.3 | Berechnung von Steuerrückstellungen | 1d? | 2012-04-09 | 2012-04-10 | 28d |  |
| 283 | 2.13.10.4 | Berechnung latenter Steuern | 1d? | 2012-04-09 | 2012-04-10 | 28d |  |
| 284 | 2.13.10.5 | Lokalisierung Englisch (teilweise schon umgesetzt) | 1d? | 2012-04-09 | 2012-04-10 | 28d |  |
| 285 | 2.13.10.6 | Unterstützung für beliebige XBRL Dokumente / ausländische Taxonomien? | 1d? | 2012-04-09 | 2012-04-10 | 28d |  |
| 286 | 2.13.10.7 | Server für Mapping Vorlagen | 1d? | 2012-04-09 | 2012-04-10 | 28d |  |

Notes:
- 262: Installshild
- 265: Erläuterungen zu einer oder mehreren XBRL-Positionen
- 271: z.B. Report HB fertig, damit von anderer Abteilung Bearbeitung übernommen werden / weitere Kunden (GEA Group AG)
- 274: Unten Label in rot mit Hinweis, dass sich die Änderungen global auswirken
- 282: Ausgangswert: HB / Ergebnis vor Steuern, Werte gehen in HB und SB ein, kann auch für eSteuer verwendet werden.

| ID | WBS | Task | Duration | Start | Finish | Total slack | Work |
| --- | --- | --- | --- | --- | --- | --- | --- |
| 287 | 2.13.11 | **QA** | 5d? | 2012-04-09 | 2012-04-16 | 24d | 160h |
| 288 | 2.13.11.1 | Entwurf weiterer Testfälle | 5d? | 2012-04-09 | 2012-04-16 | 24d |  |
| 289 | 2.13.11.2 | Definition von Unit-Tests | 1d? | 2012-04-09 | 2012-04-10 | 28d | 160h |
| 290 | 2.13.12 | **Setup und Releasemanagement** | 2d? | 2012-04-09 | 2012-04-11 | 27d |  |
| 291 | 2.13.12.1 | Erstellung neues Setup mit InstallShield, Prüfung AutoUpdate | 2d? | 2012-04-09 | 2012-04-11 | 27d |  |
| 292 | 2.13.13 | **Datenversand** | 1d? | 2012-04-09 | 2012-04-10 | 28d |  |
| 293 | 2.13.13.1 | Signierung über USB-Stick | 1d? | 2012-04-09 | 2012-04-10 | 28d |  |
| 294 | 2.13.13.2 | Signierung über Signaturkarte | 1d? | 2012-04-09 | 2012-04-10 | 28d |  |
| 295 | 2.13.14 | **Intern** | 1d? | 2012-04-09 | 2012-04-10 | 28d |  |
| 296 | 2.13.14.1 | Konsolidierung der einzelnen Tools (Druck Seriennummern, Registrierung) | 1d? | 2012-04-09 | 2012-04-10 | 28d |  |
| 297 | 2.13.14.2 | Vereinfachung des Registrierungsvorgangs / halbautomatische Registrierung | 1d? | 2012-04-09 | 2012-04-10 | 28d |  |
| 298 | 2.13.15 | **Dokumentation** | 10d? | 2012-04-09 | 2012-04-23 | 19d | 8h |
| 299 | 2.13.15.1 | Entwicklerdokumentation | 10d? | 2012-04-09 | 2012-04-23 | 19d |  |
| 300 | 2.13.15.2 | Beschreibung Bundesanzeiger | 4h | 2012-04-09 | 2012-04-09 | 28.5d |  |
| 301 | 2.13.15.3 | **Handbuch** | 1d? | 2012-04-09 | 2012-04-10 | 28d | 8h |
| 302 | 2.13.15.3.1 | Übersetzung Handbuch | 1d? | 2012-04-09 | 2012-04-10 | 28d |  |
| 303 | 2.13.15.3.2 | Vorlagen Bearbeiten etwas knapp gehalten (Anm. von vis) | 1d? | 2012-04-09 | 2012-04-10 | 28d |  |
| 304 | 2.13.15.3.3 | Stichwortverzeichnis für Handbuch | 1d? | 2012-04-09 | 2012-04-10 | 28d | 8h |
| 305 | 2.13.16 | **Zurückgestellt** | 1d? | 2012-04-09 | 2012-04-10 | 28d |  |
| 306 | 2.13.16.1 | T-Format für PDF-Ausgabe / Bilanz? | 1d? | 2012-04-09 | 2012-04-10 | 28d |  |
| 307 | 2.13.16.2 | Auswertung Berichtsbestandteile beim XBRL-Export (nur gewählte Senden?) | 0.25d | 2012-04-09 | 2012-04-09 | 28.75d |  |
| 308 | 2.13.16.3 | weitere Vorschläge aus Support? | 1d? | 2012-04-09 | 2012-04-10 | 28d |  |
| 309 | 2.13.16.4 | mehrfache Zuordnung desselben Kontos | 1d? | 2012-04-09 | 2012-04-10 | 28d |  |
| 310 | 2.13.16.5 | GUI: horiz. Tabs Verwaltung/Report | 1d? | 2012-04-09 | 2012-04-10 | 28d |  |
| 311 | 2.13.16.6 | Tool zur Fremdwährungsumrechnung | 1d? | 2012-04-09 | 2012-04-10 | 28d |  |
| 312 | 2.13.16.7 | Speicherung Taxonomien in DB statt in Programmordner (Schutz vor Änderungen) | 1d? | 2012-04-09 | 2012-04-10 | 28d |  |
| 313 | 2.13.16.8 | RFBILA? | 1d? | 2012-04-09 | 2012-04-10 | 28d |  |

Notes:
- 302: angefragt von Rockwood, erst wenn der Großteil der Änderungen umgestzt ist
- 313: gibt es im eBilanz-Kit die Möglichkeit, dass nach RFBILA konforme Buchungen direkt importiert werden können? / (Mail von Torsten Viehl / 19.03. 10:55)

| ID | WBS | Task | Type | Duration | Start | Finish | Complete | Total slack | Work | Actual work |
| --- | --- | --- | --- | --- | --- | --- | --- | --- | --- | --- |
| 314 | 2.13.17 | **Lidl Wünsche** |  | 1d? | 2012-04-09 | 2012-04-10 |  | 28d |  |  |
| 315 | 2.13.17.1 | In der Administration muss variabel und individuell gesteuert werden können, welche Teile der Taxonomie dem Anwender zu Bearbeitung freigeschaltet sind (freiwillige Berichtsbestandteile, Mussfelder, Kontennachweise etc.) |  | 1d? | 2012-04-09 | 2012-04-10 |  | 28d |  |  |
| 316 | 2.13.17.2 | In der Administration muss variabel und individuell gesteuert werden können, welche Teile der Taxonomie der Finanzverwaltung tatsächlich übermittelt werden (freiwillige Berichtsbestandteile, Mussfelder, Kontennachweise etc.) |  | 1d? | 2012-04-09 | 2012-04-10 |  | 28d |  |  |
| 317 | 2.13.17.3 | Das Mapping muss auch über Zusatzkontierungen (z.B. Bewegungsart und Partnergesellschaft) zu einem Konto möglich sein. |  | 1d? | 2012-04-09 | 2012-04-10 |  | 28d |  |  |
| 318 | 2.13.17.4 | Das Mapping auf Tupel muss möglich sein, insbesondere für die Kapitalkonten der Gesellschafter einer Personengesellschaft. |  | 1d? | 2012-04-09 | 2012-04-10 |  | 28d |  |  |
| 319 | 2.13.17.5 | Es soll eine maschinelle Schnittstelle zu SAP bestehen |  | 1d? | 2012-04-09 | 2012-04-10 |  | 28d |  |  |
| 320 | 2.13.17.6 | Es soll eine maschinelle Schnittstelle zu einer zentralen Stammdatenverwaltung bestehen. |  | 1d? | 2012-04-09 | 2012-04-10 |  | 28d |  |  |
| 321 | 2.13.17.7 | Es soll eine maschinelle Schnittstelle zu einer Steuerdeklarationssoftware bestehen. |  | 1d? | 2012-04-09 | 2012-04-10 |  | 28d |  |  |
| 322 | 2.13.17.8 | Positionen des GCD-Moduls ohne Ausprägung (Auswahlmenü) und ohne Import sollen mit den Daten aus dem Vorjahr vorbelegt werden. |  | 1d? | 2012-04-09 | 2012-04-10 |  | 28d |  |  |
| 323 | 2.13.17.9 | Die Anzeige und Versendung von freiwilligen Berichtsbestandteilen und Taxonomiepositionen muss variabel und individuell sowohl im Mapping als auch in der Erfassungsmaske gesteuert werden können. |  | 1d? | 2012-04-09 | 2012-04-10 |  | 28d |  |  |
| 324 | 2.13.17.10 | Bisher übermittelte E-Bilanzstände sollen für eine weitere Verarbeitung eingespielt/kopiert werden können. |  | 1d? | 2012-04-09 | 2012-04-10 |  | 28d |  |  |
| 325 | 2.13.17.11 | Die verschiedenen E-Bilanz-Stände sollen nach Veranlagungszeitraum und Übermittlungsdatum/-zeit abgelegt sein. |  | 1d? | 2012-04-09 | 2012-04-10 |  | 28d |  |  |
| 326 | 2.13.17.12 | Alle übermittelten E-Bilanzen müssen anzeigbar und auswertbar sein |  | 1d? | 2012-04-09 | 2012-04-10 |  | 28d |  |  |
| 327 | 2.13.17.13 | Es muss ein Freigabe-Workflow für den Versand der E-Bilanz integriert sein |  | 1d? | 2012-04-09 | 2012-04-10 |  | 28d |  |  |
| 328 | 2.13.17.14 | Der Bearbeitungsstand der E-Bilanz soll dem Ersteller in einem Cockpit/Monitor angezeigt werden. |  | 1d? | 2012-04-09 | 2012-04-10 |  | 28d |  |  |
| 329 | 2.13.17.15 | Der Bearbeitungsstand über mehrere Gesellschaften (abhängig von der Berechtigung des Users) soll in einem Cockpit/Monitor angezeigt werden |  | 1d? | 2012-04-09 | 2012-04-10 |  | 28d |  |  |
| 330 | 2.13.17.16 | Erledigte Maßnahme/Aktivität soll im Cockpit/Monitor geschlossen werden können (Öffnung der Maßnahme/Aktivität) mit entsprechender Berechtigun |  | 1d? | 2012-04-09 | 2012-04-10 |  | 28d |  |  |
| 331 | 2.13.17.17 | Sofern Maßnahme wieder geöffnet wird muss Status der Vorgängermaßnahme im Cockpit/Monitor entsprechend aktualisiert werden |  | 1d? | 2012-04-09 | 2012-04-10 |  | 28d |  |  |
| 332 | 2.14 | **erledigte Punkte** |  | 4d? | 2011-12-11 A | 2011-12-15 A | 100% |  | 4.72h | 4.72h |
| 333 | 2.14.1 | **Bugfixes** |  | 1d? | 2011-12-12 A | 2011-12-12 A | 100% |  |  |  |
| 334 | 2.14.1.1 | SuSa-Import |  | 1d? | 2011-12-12 A | 2011-12-12 A | 100% |  |  |  |
| 335 | 2.14.2 | Prüfung VC++ Runtime 2008 (benötigt von ERIC, sonst Fehler!) | milestone | 0d? | 2011-12-12 A | 2011-12-12 A | 100% |  |  |  |
| 336 | 2.14.3 | Anzeige der Aktuell verwendeten Taxonomie | milestone | 0h | 2011-12-12 A | 2011-12-12 A | 100% |  |  |  |
| 337 | 2.14.4 | AL-Spiegel / EK-Spiegel |  | 4d | 2011-12-12 A | 2011-12-15 A | 100% |  |  |  |
| 338 | 2.14.5 | Ausblenden Überleitungsrechnung bei PDF/CSV Export wenn nicht Handelsbilanz ausgewählt | milestone | 0d | 2011-12-11 A | 2011-12-11 A | 100% |  |  |  |
| 339 | 2.14.6 | Filterung beim PDF-Export auf Pflichtfelder (ggf. auch die weiteren selectierten Filter) |  | 1d? | 2011-12-12 A | 2011-12-12 A | 100% |  |  |  |
| 340 | 2.14.7 | PDF: Erweiterung um steuerliche Gewinnermittlung, ggf. auch alle anderen Berichtsbestandteile |  | 1d? | 2011-12-12 A | 2011-12-12 A | 100% |  |  |  |
| 341 | 2.14.8 | Anzeige der aktuell ausgewählten Taxonomie in Info-Bereich |  | 1d? | 2011-12-12 A | 2011-12-12 A | 100% |  |  |  |
| 342 | 2.14.9 | Visualisierung Debit/Credit Position |  | 1d? | 2011-12-12 A | 2011-12-12 A | 100% |  |  |  |
| 343 | 2.14.10 | Anzeige der SUSA-Marker nur wenn mind. zwei SUSAs existieren |  | 1d? | 2011-12-12 A | 2011-12-12 A | 100% |  |  |  |
| 344 | 2.14.11 | Übersicht Ports und Server-IP's für Datenversand |  | 0.25d | 2011-12-12 A | 2011-12-12 A | 100% |  | 2h | 2h |
| 345 | 2.14.12 | Verlinkung Handbuch |  | 0.06d | 2011-12-12 A | 2011-12-12 A | 100% |  | 0.48h | 0.48h |
| 346 | 2.14.13 | Leere Konten ausblenden |  | 0.03d | 2011-12-12 A | 2011-12-12 A | 100% |  | 0.24h | 0.24h |
| 347 | 2.14.14 | Passwort merken |  | 0.25d | 2011-12-12 A | 2011-12-12 A | 100% |  | 2h | 2h |
| 348 | 2.14.15 | Info Elster-Registrierung |  | 1d? | 2011-12-12 A | 2011-12-12 A | 100% |  |  |  |

Notes:
- 334: Nach fehlgeschlagenem Zugriff auf CSV (z.B. weil Datei mit anderer Anwendung geöffnet) einlesen erneut versuchen, wenn „Weiter gewählt bzw. Pfad geändert
- 346: Anmerkung von delta lloyd
